# ShawTrust_SD_Master_Plan_v0.2

Schedule from MS Project, 2011-11-18 to 2012-01-02.
Sony Electronics, Inc.

## Calendars

- Standard: Mon-Fri 08:00-12:00, 13:00-17:00; Sat-Sun off.

## Resources

| Resource |
| --- |
| dungnm |
| hant21 |
| hungnm |
| phongtv |
| nhanld |
| phong |

## Schedule

| ID | WBS | Task | Duration | Start | Finish | Predecessors | Total slack | Resources | Work |
| --- | --- | --- | --- | --- | --- | --- | --- | --- | --- |
| 1 | 1 | **MockProject** | 31.1d | 2011-11-18 08:00 | 2012-01-02 08:48 |  | 0d |  | 1628h |
| 2 | 1.1 | **Initiation** | 1d | 2011-11-18 08:00 | 2011-11-18 17:00 |  | 0d |  |  |
| 3 | 1.1.1 | Project kick-off & introduction | 0.25d | 2011-11-18 08:00 | 2011-11-18 10:00 |  | 0d |  |  |
| 4 | 1.1.2 | Preparation & Study overview requirements | 0.5d | 2011-11-18 10:00 | 2011-11-18 15:00 | 3 | 0d |  |  |
| 5 | 1.1.3 | Requirement brainstorming | 0.25d | 2011-11-18 15:00 | 2011-11-18 17:00 | 4 | 0d |  |  |
| 6 | 1.2 | **Create document & Learning** | 10.1d | 2011-11-21 08:00 | 2011-12-05 08:48 |  | 0d |  | 348h |
| 7 | 1.2.1 | **Build up work flow for module** | 2d | 2011-11-21 08:00 | 2011-11-22 17:00 |  | 0d |  | 64h |
| 8 | 1.2.1.1 | Build up work flow for module: 6.1,6.6, 6.7, 6.8 | 1.5d | 2011-11-21 08:00 | 2011-11-22 12:00 | 5 | 0d | nhanld | 12h |
| 9 | 1.2.1.2 | Build up work flow for module: 6.2 | 2d | 2011-11-21 08:00 | 2011-11-22 17:00 | 8SS | 28.1d | dungnm | 16h |
| 10 | 1.2.1.3 | Build up work flow for module: 6.3 | 1.5d | 2011-11-21 08:00 | 2011-11-22 12:00 | 8SS | 28.6d | hungnm | 12h |
| 11 | 1.2.1.4 | Build up work flow for module: 6.4 | 1.5d | 2011-11-21 08:00 | 2011-11-22 12:00 | 8SS | 28.6d | hant21 | 12h |
| 12 | 1.2.1.5 | Build up work flow for module: 6.5 | 1.5d | 2011-11-21 08:00 | 2011-11-22 12:00 | 8SS | 28.6d | phongtv | 12h |
| 13 | 1.2.2 | Template for prototype | 1.5d | 2011-11-22 13:00 | 2011-11-23 17:00 | 8 | 0d | nhanld | 12h |
| 14 | 1.2.3 | Create Q&A document, Rick and issues document | 0.5d | 2011-11-22 13:00 | 2011-11-22 17:00 | 13SS | 28.1d | dungnm | 4h |
| 15 | 1.2.4 | Create project plan, integrate work flow | 0.5d | 2011-11-22 13:00 | 2011-11-22 17:00 | 13SS | 28.1d | hant21 | 4h |
| 16 | 1.2.5 | Learning Spring dependency | 0.5d | 2011-11-22 13:00 | 2011-11-22 17:00 | 13SS | 28.1d | hungnm | 4h |
| 17 | 1.2.6 | Leaning Hibernate | 0.5d | 2011-11-22 13:00 | 2011-11-22 17:00 | 13SS | 28.1d | phongtv | 4h |
| 18 | 1.2.7 | **Build up prototype** | 1.5d | 2011-11-24 08:00 | 2011-11-25 12:00 |  | 0d |  | 60h |
| 19 | 1.2.7.1 | Build up prototype for module: 6.1,6.6, 6.7, 6.8 | 1.5d | 2011-11-24 08:00 | 2011-11-25 12:00 | 13 | 0d | nhanld | 12h |
| 20 | 1.2.7.2 | Build up prototype for module: 6.2 | 1.5d | 2011-11-24 08:00 | 2011-11-25 12:00 | 19SS | 25.6d | dungnm | 12h |
| 21 | 1.2.7.3 | Build up prototype for module: 6.3 | 1.5d | 2011-11-24 08:00 | 2011-11-25 12:00 | 19SS | 25.6d | dungnm | 12h |
| 22 | 1.2.7.4 | Build up prototype for module: 6.4 | 1.5d | 2011-11-24 08:00 | 2011-11-25 12:00 | 19SS | 25.6d | hant21 | 12h |
| 23 | 1.2.7.5 | Build up prototype for module: 6.5 | 1.5d | 2011-11-24 08:00 | 2011-11-25 12:00 | 19SS | 25.6d | phongtv | 12h |
| 24 | 1.2.8 | Learning Spring dependency | 2d | 2011-11-25 13:00 | 2011-11-29 12:00 | 19 | 0d | dungnm; hungnm | 32h |
| 25 | 1.2.9 | Learning Hibernate | 2d | 2011-11-25 13:00 | 2011-11-29 12:00 | 24SS | 23.6d | hant21; phongtv | 32h |
| 26 | 1.2.10 | Demo hibernate | 0.25d | 2011-11-29 13:00 | 2011-11-29 15:00 | 24 | 0d | hant21; phong | 4h |
| 27 | 1.2.11 | Demo spring | 0.25d | 2011-11-29 15:00 | 2011-11-29 17:00 | 26 | 0d | dungnm; hungnm | 4h |
| 28 | 1.2.12 | Design database | 0.1d | 2011-11-30 08:00 | 2011-11-30 08:48 | 27 | 0d | dungnm; hungnm; nhanld; phongtv; hant21 | 4h |
| 29 | 1.2.13 | High level design | 1d | 2011-11-30 08:48 | 2011-12-01 08:48 | 28 | 0d | dungnm; hungnm; nhanld; phongtv; hant21 | 40h |
| 30 | 1.2.14 | Learning control layout | 2d | 2011-12-01 08:48 | 2011-12-05 08:48 | 29 | 0d | dungnm; nhanld | 32h |
| 31 | 1.2.15 | Learning struts2, spring, hibernate integration | 2d | 2011-12-01 08:48 | 2011-12-05 08:48 | 30SS | 0d | hant21; phongtv; hungnm | 48h |

| ID | WBS | Task | Duration | Start | Finish | Predecessors | Total slack | Free slack | Resources | Work |
| --- | --- | --- | --- | --- | --- | --- | --- | --- | --- | --- |
| 32 | 1.3 | **Construction** | 16d | 2011-12-05 08:48 | 2011-12-27 08:48 |  | 0d |  |  | 1168h |
| 33 | 1.3.1 | **Iteration 1 - Login, menu, contact, addresslookup** | 12.5d | 2011-12-05 08:48 | 2011-12-21 13:48 |  | 0d |  |  | 200h |
| 34 | 1.3.1.1 | **Logon-Logout, menu** | 5d | 2011-12-05 08:48 | 2011-12-12 08:48 |  | 0d |  | nhanld | 80h |
| 35 | 1.3.1.1.1 | Class, Sequence digaram | 0.5d | 2011-12-05 08:48 | 2011-12-05 13:48 | 31 | 0d |  | nhanld | 4h |
| 36 | 1.3.1.1.2 | Prepare for Unit testing | 0.5d | 2011-12-05 13:48 | 2011-12-06 08:48 | 35 | 7.5d | 0d | nhanld | 4h |
| 37 | 1.3.1.1.3 | Code | 2d | 2011-12-06 08:48 | 2011-12-08 08:48 | 36 | 7.5d | 0d | nhanld | 16h |
| 38 | 1.3.1.1.4 | Peer code review | 0.5d | 2011-12-08 08:48 | 2011-12-08 13:48 | 37 | 7.5d | 0d | nhanld | 4h |
| 39 | 1.3.1.1.5 | Prepare UT script | 0.5d | 2011-12-08 13:48 | 2011-12-09 08:48 | 38 | 7.5d | 0d | nhanld | 4h |
| 40 | 1.3.1.1.6 | Perform UT and fix bug | 1d | 2011-12-09 08:48 | 2011-12-12 08:48 | 39 | 7.5d | 0d | nhanld | 8h |
| 41 | 1.3.1.2 | **Contact** | 4d | 2011-12-12 08:48 | 2011-12-16 08:48 |  | 7.5d |  | nhanld | 64h |
| 42 | 1.3.1.2.1 | Class, Sequence digaram | 0.5d | 2011-12-12 08:48 | 2011-12-12 13:48 | 40 | 7.5d | 0d | nhanld | 4h |
| 43 | 1.3.1.2.2 | Prepare for Unit testing | 0.5d | 2011-12-12 13:48 | 2011-12-13 08:48 | 42 | 7.5d | 0d | nhanld | 4h |
| 44 | 1.3.1.2.3 | Code | 1.5d | 2011-12-13 08:48 | 2011-12-14 13:48 | 43 | 7.5d | 0d | nhanld | 12h |
| 45 | 1.3.1.2.4 | Peer code review | 0.5d | 2011-12-14 13:48 | 2011-12-15 08:48 | 44 | 7.5d | 0d | nhanld | 4h |
| 46 | 1.3.1.2.5 | Prepare UT script | 0.5d | 2011-12-15 08:48 | 2011-12-15 13:48 | 45 | 7.5d | 0d | nhanld | 4h |
| 47 | 1.3.1.2.6 | Perform UT and fix bug | 0.5d | 2011-12-15 13:48 | 2011-12-16 08:48 | 46 | 7.5d | 0d | nhanld | 4h |
| 48 | 1.3.1.3 | **Address lookup** | 3.5d | 2011-12-16 08:48 | 2011-12-21 13:48 |  | 7.5d |  | nhanld | 56h |
| 49 | 1.3.1.3.1 | Class, Sequence digaram | 0.5d | 2011-12-16 08:48 | 2011-12-16 13:48 | 47 | 7.5d | 0d | nhanld | 4h |
| 50 | 1.3.1.3.2 | Prepare for Unit testing | 0.5d | 2011-12-16 13:48 | 2011-12-19 08:48 | 49 | 7.5d | 0d | nhanld | 4h |
| 51 | 1.3.1.3.3 | Code | 1d | 2011-12-19 08:48 | 2011-12-20 08:48 | 50 | 7.5d | 0d | nhanld | 8h |
| 52 | 1.3.1.3.4 | Peer code review | 0.5d | 2011-12-20 08:48 | 2011-12-20 13:48 | 51 | 7.5d | 0d | nhanld | 4h |
| 53 | 1.3.1.3.5 | Prepare UT script | 0.5d | 2011-12-20 13:48 | 2011-12-21 08:48 | 52 | 7.5d | 0d | nhanld | 4h |
| 54 | 1.3.1.3.6 | Perform UT and fix bug | 0.5d | 2011-12-21 08:48 | 2011-12-21 13:48 | 53 | 7.5d |  | nhanld | 4h |
| 55 | 1.3.2 | **Iteration 2 - Organization Maintenance** | 16d | 2011-12-05 08:48 | 2011-12-27 08:48 |  | 4d |  |  | 336h |
| 56 | 1.3.2.1 | **Organization** | 5d | 2011-12-05 08:48 | 2011-12-12 08:48 |  | 4d |  | dungnm | 80h |
| 57 | 1.3.2.1.1 | Class, Sequence digaram | 0.5d | 2011-12-05 08:48 | 2011-12-05 13:48 | 35SS | 4d | 0d | dungnm | 4h |
| 58 | 1.3.2.1.2 | Prepare for Unit testing | 0.5d | 2011-12-05 13:48 | 2011-12-06 08:48 | 57 | 4d | 0d | dungnm | 4h |
| 59 | 1.3.2.1.3 | Code | 2d | 2011-12-06 08:48 | 2011-12-08 08:48 | 58 | 4d | 0d | dungnm | 16h |
| 60 | 1.3.2.1.4 | Peer code review | 0.5d | 2011-12-08 08:48 | 2011-12-08 13:48 | 59 | 4d | 0d | dungnm | 4h |
| 61 | 1.3.2.1.5 | Prepare UT script | 0.5d | 2011-12-08 13:48 | 2011-12-09 08:48 | 60 | 4d | 0d | dungnm | 4h |
| 62 | 1.3.2.1.6 | Perform UT and fix bug | 1d | 2011-12-09 08:48 | 2011-12-12 08:48 | 61 | 4d | 0d | dungnm | 8h |

Notes:
- 34: Logon logout, menu
- 41: (List, Add, Amend)
- 48: (List, Add, Amend)
- 56: (List, Add, Amend)

| ID | WBS | Task | Duration | Start | Finish | Predecessors | Total slack | Free slack | Resources | Work |
| --- | --- | --- | --- | --- | --- | --- | --- | --- | --- | --- |
| 63 | 1.3.2.2 | **Supporting Materials** | 4d | 2011-12-12 08:48 | 2011-12-16 08:48 |  | 4d |  | dungnm | 64h |
| 64 | 1.3.2.2.1 | Class, Sequence digaram | 0.5d | 2011-12-12 08:48 | 2011-12-12 13:48 | 62 | 4d | 0d | dungnm | 4h |
| 65 | 1.3.2.2.2 | Prepare for Unit testing | 0.5d | 2011-12-12 13:48 | 2011-12-13 08:48 | 64 | 4d | 0d | dungnm | 4h |
| 66 | 1.3.2.2.3 | Code | 1.5d | 2011-12-13 08:48 | 2011-12-14 13:48 | 65 | 4d | 0d | dungnm | 12h |
| 67 | 1.3.2.2.4 | Peer code review | 0.5d | 2011-12-14 13:48 | 2011-12-15 08:48 | 66 | 4d | 0d | dungnm | 4h |
| 68 | 1.3.2.2.5 | Prepare UT script | 0.5d | 2011-12-15 08:48 | 2011-12-15 13:48 | 67 | 4d | 0d | dungnm | 4h |
| 69 | 1.3.2.2.6 | Perform UT and fix bug | 0.5d | 2011-12-15 13:48 | 2011-12-16 08:48 | 68 | 4d | 0d | dungnm | 4h |
| 70 | 1.3.2.3 | **Directorates** | 3.5d | 2011-12-16 08:48 | 2011-12-21 13:48 |  | 4d |  | dungnm | 56h |
| 71 | 1.3.2.3.1 | Class, Sequence digaram | 0.5d | 2011-12-16 08:48 | 2011-12-16 13:48 | 69 | 4d | 0d | dungnm | 4h |
| 72 | 1.3.2.3.2 | Prepare for Unit testing | 0.5d | 2011-12-16 13:48 | 2011-12-19 08:48 | 71 | 4d | 0d | dungnm | 4h |
| 73 | 1.3.2.3.3 | Code | 1d | 2011-12-19 08:48 | 2011-12-20 08:48 | 72 | 4d | 0d | dungnm | 8h |
| 74 | 1.3.2.3.4 | Peer code review | 0.5d | 2011-12-20 08:48 | 2011-12-20 13:48 | 73 | 4d | 0d | dungnm | 4h |
| 75 | 1.3.2.3.5 | Prepare UT script | 0.5d | 2011-12-20 13:48 | 2011-12-21 08:48 | 74 | 4d | 0d | dungnm | 4h |
| 76 | 1.3.2.3.6 | Perform UT and fix bug | 0.5d | 2011-12-21 08:48 | 2011-12-21 13:48 | 75 | 4d | 0d | dungnm | 4h |
| 77 | 1.3.2.4 | **Department** | 3.5d | 2011-12-21 13:48 | 2011-12-27 08:48 |  | 4d |  | dungnm | 56h |
| 78 | 1.3.2.4.1 | Class, Sequence digaram | 0.5d | 2011-12-21 13:48 | 2011-12-22 08:48 | 76 | 4d | 0d | dungnm | 4h |
| 79 | 1.3.2.4.2 | Prepare for Unit testing | 0.5d | 2011-12-22 08:48 | 2011-12-22 13:48 | 78 | 4d | 0d | dungnm | 4h |
| 80 | 1.3.2.4.3 | Code | 1d | 2011-12-22 13:48 | 2011-12-23 13:48 | 79 | 4d | 0d | dungnm | 8h |
| 81 | 1.3.2.4.4 | Peer code review | 0.5d | 2011-12-23 13:48 | 2011-12-26 08:48 | 80 | 4d | 0d | dungnm | 4h |
| 82 | 1.3.2.4.5 | Prepare UT script | 0.5d | 2011-12-26 08:48 | 2011-12-26 13:48 | 81 | 4d | 0d | dungnm | 4h |
| 83 | 1.3.2.4.6 | Perform UT and fix bug | 0.5d | 2011-12-26 13:48 | 2011-12-27 08:48 | 82 | 4d |  | dungnm | 4h |
| 84 | 1.3.2.5 | **Team** | 5d | 2011-12-05 08:48 | 2011-12-12 08:48 |  | 7.5d |  | hungnm | 80h |
| 85 | 1.3.2.5.1 | Class, Sequence digaram | 0.5d | 2011-12-05 08:48 | 2011-12-05 13:48 | 35SS | 7.5d | 0d | hungnm | 4h |
| 86 | 1.3.2.5.2 | Prepare for Unit testing | 0.5d | 2011-12-05 13:48 | 2011-12-06 08:48 | 85 | 7.5d | 0d | hungnm | 4h |
| 87 | 1.3.2.5.3 | Code | 2d | 2011-12-06 08:48 | 2011-12-08 08:48 | 86 | 7.5d | 0d | hungnm | 16h |
| 88 | 1.3.2.5.4 | Peer code review | 0.5d | 2011-12-08 08:48 | 2011-12-08 13:48 | 87 | 7.5d | 0d | hungnm | 4h |
| 89 | 1.3.2.5.5 | Prepare UT script | 0.5d | 2011-12-08 13:48 | 2011-12-09 08:48 | 88 | 7.5d | 0d | hungnm | 4h |
| 90 | 1.3.2.5.6 | Perform UT and fix bug | 1d | 2011-12-09 08:48 | 2011-12-12 08:48 | 89 | 7.5d | 0d | hungnm | 8h |

Notes:
- 63: (List, Add, Amend, Mark)
- 70: (List, Add, Amend, Mark)
- 77: (List, Add, Amend, Mark)
- 84: (List, Add, Amend, Mark)

| ID | WBS | Task | Duration | Start | Finish | Predecessors | Total slack | Free slack | Resources | Work |
| --- | --- | --- | --- | --- | --- | --- | --- | --- | --- | --- |
| 91 | 1.3.3 | **Iteration 3 - Services, Programme** | 7.5d | 2011-12-12 08:48 | 2011-12-21 13:48 |  | 7.5d |  |  | 120h |
| 92 | 1.3.3.1 | **Service** | 4d | 2011-12-12 08:48 | 2011-12-16 08:48 |  | 7.5d |  | hungnm | 64h |
| 93 | 1.3.3.1.1 | Class, Sequence digaram | 0.5d | 2011-12-12 08:48 | 2011-12-12 13:48 | 90 | 7.5d | 0d | hungnm | 4h |
| 94 | 1.3.3.1.2 | Prepare for Unit testing | 0.5d | 2011-12-12 13:48 | 2011-12-13 08:48 | 93 | 7.5d | 0d | hungnm | 4h |
| 95 | 1.3.3.1.3 | Code | 1.5d | 2011-12-13 08:48 | 2011-12-14 13:48 | 94 | 7.5d | 0d | hungnm | 12h |
| 96 | 1.3.3.1.4 | Peer code review | 0.5d | 2011-12-14 13:48 | 2011-12-15 08:48 | 95 | 7.5d | 0d | hungnm | 4h |
| 97 | 1.3.3.1.5 | Prepare UT script | 0.5d | 2011-12-15 08:48 | 2011-12-15 13:48 | 96 | 7.5d | 0d | hungnm | 4h |
| 98 | 1.3.3.1.6 | Perform UT and fix bug | 0.5d | 2011-12-15 13:48 | 2011-12-16 08:48 | 97 | 7.5d | 0d | hungnm | 4h |
| 99 | 1.3.3.2 | **Programme** | 3.5d | 2011-12-16 08:48 | 2011-12-21 13:48 |  | 7.5d |  | hungnm | 56h |
| 100 | 1.3.3.2.1 | Class, Sequence digaram | 0.5d | 2011-12-16 08:48 | 2011-12-16 13:48 | 98 | 7.5d | 0d | hungnm | 4h |
| 101 | 1.3.3.2.2 | Prepare for Unit testing | 0.5d | 2011-12-16 13:48 | 2011-12-19 08:48 | 100 | 7.5d | 0d | hungnm | 4h |
| 102 | 1.3.3.2.3 | Code | 1d | 2011-12-19 08:48 | 2011-12-20 08:48 | 101 | 7.5d | 0d | hungnm | 8h |
| 103 | 1.3.3.2.4 | Peer code review | 0.5d | 2011-12-20 08:48 | 2011-12-20 13:48 | 102 | 7.5d | 0d | hungnm | 4h |
| 104 | 1.3.3.2.5 | Prepare UT script | 0.5d | 2011-12-20 13:48 | 2011-12-21 08:48 | 103 | 7.5d | 0d | hungnm | 4h |
| 105 | 1.3.3.2.6 | Perform UT and fix bug | 0.5d | 2011-12-21 08:48 | 2011-12-21 13:48 | 104 | 7.5d |  | hungnm | 4h |
| 106 | 1.3.4 | **Iteration 4 -Trust Region, Trust District, Govermenet list, Type of Business lookup** | 16d | 2011-12-05 08:48 | 2011-12-27 08:48 |  | 4d |  |  | 256h |
| 107 | 1.3.4.1 | **Trust Region** | 5d | 2011-12-05 08:48 | 2011-12-12 08:48 |  | 4d |  | hant21 | 80h |
| 108 | 1.3.4.1.1 | Class, Sequence digaram | 0.5d | 2011-12-05 08:48 | 2011-12-05 13:48 | 35SS | 4d | 0d | hant21 | 4h |
| 109 | 1.3.4.1.2 | Prepare for Unit testing | 0.5d | 2011-12-05 13:48 | 2011-12-06 08:48 | 108 | 4d | 0d | hant21 | 4h |
| 110 | 1.3.4.1.3 | Code | 2d | 2011-12-06 08:48 | 2011-12-08 08:48 | 109 | 4d | 0d | hant21 | 16h |
| 111 | 1.3.4.1.4 | Peer code review | 0.5d | 2011-12-08 08:48 | 2011-12-08 13:48 | 110 | 4d | 0d | hant21 | 4h |
| 112 | 1.3.4.1.5 | Prepare UT script | 0.5d | 2011-12-08 13:48 | 2011-12-09 08:48 | 111 | 4d | 0d | hant21 | 4h |
| 113 | 1.3.4.1.6 | Perform UT and fix bug | 1d | 2011-12-09 08:48 | 2011-12-12 08:48 | 112 | 4d | 0d | hant21 | 8h |
| 114 | 1.3.4.2 | **Trust District** | 4d | 2011-12-12 08:48 | 2011-12-16 08:48 |  | 4d |  | hant21 | 64h |
| 115 | 1.3.4.2.1 | Class, Sequence digaram | 0.5d | 2011-12-12 08:48 | 2011-12-12 13:48 | 113 | 4d | 0d | hant21 | 4h |
| 116 | 1.3.4.2.2 | Prepare for Unit testing | 0.5d | 2011-12-12 13:48 | 2011-12-13 08:48 | 115 | 4d | 0d | hant21 | 4h |
| 117 | 1.3.4.2.3 | Code | 1.5d | 2011-12-13 08:48 | 2011-12-14 13:48 | 116 | 4d | 0d | hant21 | 12h |
| 118 | 1.3.4.2.4 | Peer code review | 0.5d | 2011-12-14 13:48 | 2011-12-15 08:48 | 117 | 4d | 0d | hant21 | 4h |
| 119 | 1.3.4.2.5 | Prepare UT script | 0.5d | 2011-12-15 08:48 | 2011-12-15 13:48 | 118 | 4d | 0d | hant21 | 4h |
| 120 | 1.3.4.2.6 | Perform UT and fix bug | 0.5d | 2011-12-15 13:48 | 2011-12-16 08:48 | 119 | 4d | 0d | hant21 | 4h |

Notes:
- 92: (List, Add, Amend, Mark)
- 99: (List, Add, Amend, Mark)
- 107: (List, Add, Amend, Mark)
- 114: (List, Add, Amend, Mark)

| ID | WBS | Task | Duration | Start | Finish | Predecessors | Total slack | Free slack | Resources | Work |
| --- | --- | --- | --- | --- | --- | --- | --- | --- | --- | --- |
| 121 | 1.3.4.3 | **Gov Office** | 3.5d | 2011-12-16 08:48 | 2011-12-21 13:48 |  | 4d |  | hant21 | 56h |
| 122 | 1.3.4.3.1 | Class, Sequence digaram | 0.5d | 2011-12-16 08:48 | 2011-12-16 13:48 | 120 | 4d | 0d | hant21 | 4h |
| 123 | 1.3.4.3.2 | Prepare for Unit testing | 0.5d | 2011-12-16 13:48 | 2011-12-19 08:48 | 122 | 4d | 0d | hant21 | 4h |
| 124 | 1.3.4.3.3 | Code | 1d | 2011-12-19 08:48 | 2011-12-20 08:48 | 123 | 4d | 0d | hant21 | 8h |
| 125 | 1.3.4.3.4 | Peer code review | 0.5d | 2011-12-20 08:48 | 2011-12-20 13:48 | 124 | 4d | 0d | hant21 | 4h |
| 126 | 1.3.4.3.5 | Prepare UT script | 0.5d | 2011-12-20 13:48 | 2011-12-21 08:48 | 125 | 4d | 0d | hant21 | 4h |
| 127 | 1.3.4.3.6 | Perform UT and fix bug | 0.5d | 2011-12-21 08:48 | 2011-12-21 13:48 | 126 | 4d | 0d | hant21 | 4h |
| 128 | 1.3.4.4 | **Type of Business lookup** | 3.5d | 2011-12-21 13:48 | 2011-12-27 08:48 |  | 4d |  | hant21 | 56h |
| 129 | 1.3.4.4.1 | Class, Sequence digaram | 0.5d | 2011-12-21 13:48 | 2011-12-22 08:48 | 127 | 4d | 0d | hant21 | 4h |
| 130 | 1.3.4.4.2 | Prepare for Unit testing | 0.5d | 2011-12-22 08:48 | 2011-12-22 13:48 | 129 | 4d | 0d | hant21 | 4h |
| 131 | 1.3.4.4.3 | Code | 1d | 2011-12-22 13:48 | 2011-12-23 13:48 | 130 | 4d | 0d | hant21 | 8h |
| 132 | 1.3.4.4.4 | Peer code review | 0.5d | 2011-12-23 13:48 | 2011-12-26 08:48 | 131 | 4d | 0d | hant21 | 4h |
| 133 | 1.3.4.4.5 | Prepare UT script | 0.5d | 2011-12-26 08:48 | 2011-12-26 13:48 | 132 | 4d | 0d | hant21 | 4h |
| 134 | 1.3.4.4.6 | Perform UT and fix bug | 0.5d | 2011-12-26 13:48 | 2011-12-27 08:48 | 133 | 4d |  | hant21 | 4h |
| 135 | 1.3.5 | **Iteration 5 -Premise, Facility, Volunteering, Minor Work Projects** | 16d | 2011-12-05 08:48 | 2011-12-27 08:48 |  | 0d |  |  | 256h |
| 136 | 1.3.5.1 | **Premise** | 5d | 2011-12-05 08:48 | 2011-12-12 08:48 |  | 0d |  | phongtv | 80h |
| 137 | 1.3.5.1.1 | Class, Sequence digaram | 0.5d | 2011-12-05 08:48 | 2011-12-05 13:48 | 35SS | 0d |  | phongtv | 4h |
| 138 | 1.3.5.1.2 | Prepare for Unit testing | 0.5d | 2011-12-05 13:48 | 2011-12-06 08:48 | 137 | 0d |  | phongtv | 4h |
| 139 | 1.3.5.1.3 | Code | 2d | 2011-12-06 08:48 | 2011-12-08 08:48 | 138 | 0d |  | phongtv | 16h |
| 140 | 1.3.5.1.4 | Peer code review | 0.5d | 2011-12-08 08:48 | 2011-12-08 13:48 | 139 | 0d |  | phongtv | 4h |
| 141 | 1.3.5.1.5 | Prepare UT script | 0.5d | 2011-12-08 13:48 | 2011-12-09 08:48 | 140 | 0d |  | phongtv | 4h |
| 142 | 1.3.5.1.6 | Perform UT and fix bug | 1d | 2011-12-09 08:48 | 2011-12-12 08:48 | 141 | 0d |  | phongtv | 8h |
| 143 | 1.3.5.2 | **Facility** | 4d | 2011-12-12 08:48 | 2011-12-16 08:48 |  | 0d |  | phongtv | 64h |
| 144 | 1.3.5.2.1 | Class, Sequence digaram | 0.5d | 2011-12-12 08:48 | 2011-12-12 13:48 | 142 | 0d |  | phongtv | 4h |
| 145 | 1.3.5.2.2 | Prepare for Unit testing | 0.5d | 2011-12-12 13:48 | 2011-12-13 08:48 | 144 | 0d |  | phongtv | 4h |
| 146 | 1.3.5.2.3 | Code | 1.5d | 2011-12-13 08:48 | 2011-12-14 13:48 | 145 | 0d |  | phongtv | 12h |
| 147 | 1.3.5.2.4 | Peer code review | 0.5d | 2011-12-14 13:48 | 2011-12-15 08:48 | 146 | 0d |  | phongtv | 4h |
| 148 | 1.3.5.2.5 | Prepare UT script | 0.5d | 2011-12-15 08:48 | 2011-12-15 13:48 | 147 | 0d |  | phongtv | 4h |
| 149 | 1.3.5.2.6 | Perform UT and fix bug | 0.5d | 2011-12-15 13:48 | 2011-12-16 08:48 | 148 | 0d |  | phongtv | 4h |

Notes:
- 121: (List, Detail)
- 128: (List, Search)
- 136: (List, Add, Amend)
- 143: (List, Add, Amend, Mark)

| ID | WBS | Task | Duration | Start | Finish | Predecessors | Total slack | Resources | Work |
| --- | --- | --- | --- | --- | --- | --- | --- | --- | --- |
| 150 | 1.3.5.3 | **Volunteering** | 3.5d | 2011-12-16 08:48 | 2011-12-21 13:48 |  | 0d | phongtv | 56h |
| 151 | 1.3.5.3.1 | Class, Sequence digaram | 0.5d | 2011-12-16 08:48 | 2011-12-16 13:48 | 149 | 0d | phongtv | 4h |
| 152 | 1.3.5.3.2 | Prepare for Unit testing | 0.5d | 2011-12-16 13:48 | 2011-12-19 08:48 | 151 | 0d | phongtv | 4h |
| 153 | 1.3.5.3.3 | Code | 1d | 2011-12-19 08:48 | 2011-12-20 08:48 | 152 | 0d | phongtv | 8h |
| 154 | 1.3.5.3.4 | Peer code review | 0.5d | 2011-12-20 08:48 | 2011-12-20 13:48 | 153 | 0d | phongtv | 4h |
| 155 | 1.3.5.3.5 | Prepare UT script | 0.5d | 2011-12-20 13:48 | 2011-12-21 08:48 | 154 | 0d | phongtv | 4h |
| 156 | 1.3.5.3.6 | Perform UT and fix bug | 0.5d | 2011-12-21 08:48 | 2011-12-21 13:48 | 155 | 0d | phongtv | 4h |
| 157 | 1.3.5.4 | **Minor Work Projects** | 3.5d | 2011-12-21 13:48 | 2011-12-27 08:48 |  | 0d | phongtv | 56h |
| 158 | 1.3.5.4.1 | Class, Sequence digaram | 0.5d | 2011-12-21 13:48 | 2011-12-22 08:48 | 156 | 0d | phongtv | 4h |
| 159 | 1.3.5.4.2 | Prepare for Unit testing | 0.5d | 2011-12-22 08:48 | 2011-12-22 13:48 | 158 | 0d | phongtv | 4h |
| 160 | 1.3.5.4.3 | Code | 1d | 2011-12-22 13:48 | 2011-12-23 13:48 | 159 | 0d | phongtv | 8h |
| 161 | 1.3.5.4.4 | Peer code review | 0.5d | 2011-12-23 13:48 | 2011-12-26 08:48 | 160 | 0d | phongtv | 4h |
| 162 | 1.3.5.4.5 | Prepare UT script | 0.5d | 2011-12-26 08:48 | 2011-12-26 13:48 | 161 | 0d | phongtv | 4h |
| 163 | 1.3.5.4.6 | Perform UT and fix bug | 0.5d | 2011-12-26 13:48 | 2011-12-27 08:48 | 162 | 0d | phongtv | 4h |
| 165 | 1.4 | **Integrate modules** | 4d | 2011-12-27 08:48 | 2012-01-02 08:48 |  | 0d |  | 112h |
| 166 | 1.4.1 | Merge modules | 1d | 2011-12-27 08:48 | 2011-12-28 08:48 | 163 | 0d | nhanld | 8h |
| 167 | 1.4.2 | System test | 2d | 2011-12-28 08:48 | 2011-12-30 08:48 | 166 | 0d | phongtv; hant21; hungnm; dungnm | 64h |
| 168 | 1.4.3 | **Help document** | 1d | 2011-12-30 08:48 | 2012-01-02 08:48 |  | 0d |  | 40h |
| 169 | 1.4.3.1 | Write help documents | 1d | 2011-12-30 08:48 | 2012-01-02 08:48 | 167 | 0d | phongtv; hant21; hungnm; dungnm; nhanld | 40h |

Notes:
- 150: (List, Add, Amend, Mark)
- 157: (List, Add, Amend, Mark)
